# Independent Travel Training w/ VR

How a schedule from MS Project changed from version to version. A marks actual dates.

## Version 1 (saved 2022-10-06)

Note of the change: Documentation

| ID | WBS | Task | Duration | Start | Finish | Predecessors | Total float | Constraint |
| --- | --- | --- | --- | --- | --- | --- | --- | --- |
| 1 | 1 | **Project Milestones** | 162d | 2022-10-03 | 2023-04-27 |  |  |  |
| 2 |  | Review Point 1 | 1d | 2022-10-21 | 2022-10-21 |  |  | finish no earlier than 2022-10-21 |
| 3 |  | Ethics Declaration | 1d | 2022-10-21 | 2022-10-21 |  |  |  |
| 4 |  | Ethics Submission | 30d | 2022-10-24 | 2022-11-26 |  | 117d | start no earlier than 2022-10-24 |
| 5 |  | Tutorial 2 | 1d | 2022-11-25 | 2022-11-25 |  |  | start no earlier than 2022-11-25 |
| 6 |  | Review Point 2 | 1d | 2022-12-02 | 2022-12-02 |  |  | start no earlier than 2022-12-02 |
| 7 |  | Tutorial 3 | 1d | 2023-02-10 | 2023-02-10 |  |  | start no earlier than 2023-02-10 |
| 8 |  | Review Point 3 | 1d | 2023-02-17 | 2023-02-17 |  |  | start no earlier than 2023-02-17 |
| 9 |  | Showcase Entry | 1d | 2023-02-17 | 2023-02-17 |  |  | finish no earlier than 2023-02-17 |
| 10 |  | Personal Project Deadline | 1d | 2023-03-17 | 2023-03-17 |  |  | start no earlier than 2023-03-17 |
| 11 |  | Tutorial 4 | 1d | 2023-04-07 | 2023-04-07 |  |  | start no earlier than 2023-04-07 |
| 12 |  | Project Deadline | 1d | 2023-04-21 | 2023-04-21 |  |  | start no earlier than 2023-04-21 |
| 13 |  | Showcase | 1d | 2023-04-27 | 2023-04-27 |  |  | start no earlier than 2023-04-27 |
| 14 | 2 | **Other Commitments** | 132d? | 2022-11-09 | 2023-05-02 |  |  |  |
| 15 | 2.1 | **Mobile Platform Applications Module Coursework** | 100d | 2022-11-09 | 2023-03-18 |  | 32d |  |
| 16 |  | CW1 Submission | 4d | 2022-11-09 | 2022-11-13 |  | 128d | finish no earlier than 2022-11-13 |
| 17 |  | CW2 Submission | 30d | 2023-02-07 | 2023-03-18 |  | 32d | finish no earlier than 2023-03-18 |
| 18 |  | Graphics in Games Module Coursework | 75d | 2023-01-17 | 2023-04-28 |  | 2d | finish no earlier than 2023-04-28 |
| 19 |  | Serious Games Module Coursework | 134d | 2022-11-07 | 2023-05-02 |  | 0d | finish no earlier than 2023-05-02 |
| 20 | 2.4 | **Virtual Reality Module Coursework** | 143d? | 2022-10-17 | 2023-04-17 |  |  |  |
| 21 |  | Report Submission | 10d | 2022-12-06 | 2022-12-16 |  | 98d | finish no earlier than 2022-12-16 |
| 22 |  | Software Submission | 40d | 2023-02-07 | 2023-03-31 |  | 22d | finish no earlier than 2023-03-31 |
| 23 | 3 | **Implementation** | 88d | 2022-10-10 | 2023-01-23 |  |  |  |
| 24 | 3.1 | **Automated Traffic System** | 30d | 2022-10-10 | 2022-11-10 |  | 130d |  |
| 25 |  | Moving Vehicles | 2d | 2022-10-10 | 2022-10-11 |  | 158d |  |
| 26 |  | Vehicle Pathing System | 3d | 2022-10-13 | 2022-10-15 |  | 152d | start no earlier than 2022-10-13 |
| 27 |  | Variable Vehicle Speeds | 2d | 2022-10-17 | 2022-10-18 | 26 | 152d |  |
| 28 |  | Variable Vehicle Spawn rates | 2d | 2022-10-20 | 2022-10-21 |  | 147d | start no earlier than 2022-10-20 |
| 29 |  | Vehicles stop in front of each other | 2d | 2022-10-22 | 2022-10-23 | 28 | 147d | finish no earlier than 2022-10-23 |
| 30 |  | Vehicles stop when user is in front of it | 2d | 2022-10-26 | 2022-10-27 |  | 143d | start no earlier than 2022-10-26 |
| 31 |  | Vehicles follow traffic light system | 2d | 2022-10-29 | 2022-10-30 |  | 140d | finish no earlier than 2022-10-30 |
| 32 |  | Vehicle interaction with zebra crossing | 2d | 2022-11-02 | 2022-11-03 |  | 136d | start no earlier than 2022-11-02 |
| 33 |  | Vehicle 3D models | 5d | 2022-11-05 | 2022-11-10 |  | 130d | start no earlier than 2022-11-05 |
| 34 | 3.2 | **Application Levels** | 22d | 2022-11-25 | 2022-12-19 |  |  |  |
| 35 |  | Plain Crossing Level | 1d | 2022-11-25 | 2022-11-25 |  | 116d |  |
| 36 |  | Zebra Crossing Level | 1d | 2022-11-26 | 2022-11-26 | 35 | 116d | start no earlier than 2022-11-26 |
| 37 |  | Pelican Crossing Level | 1d | 2022-11-27 | 2022-11-27 | 36 | 116d | start no earlier than 2022-11-27 |
| 38 |  | Crossroad Crossing Level | 2d | 2022-11-29 | 2022-11-30 |  | 113d | start no earlier than 2022-11-29 |
| 39 |  | Practice Level | 1d | 2022-12-03 | 2022-12-03 |  | 109d | finish no earlier than 2022-12-03 |
| 40 |  | Level Starting Point | 1d | 2022-12-04 | 2022-12-04 | 39 | 109d | start no earlier than 2022-12-04 |
| 41 |  | Level Completion Point | 1d | 2022-12-06 | 2022-12-06 |  | 107d | start no earlier than 2022-12-06 |
| 42 |  | Road 3D Models | 6d | 2022-11-25 | 2022-11-30 |  | 113d |  |
| 43 |  | Surrounding Area Decorations | 4d | 2022-12-09 | 2022-12-13 |  | 101d | start no earlier than 2022-12-09 |
| 44 | 3.3 | **User and Locomotion** | 15d | 2022-12-19 | 2023-01-06 |  |  |  |
| 45 |  | First and Third-Person POVs | 3d | 2022-12-19 | 2022-12-21 |  | 83d |  |
| 46 |  | Generic Player Avatar | 2d | 2022-12-22 | 2022-12-23 | 45 | 83d |  |
| 47 |  | Walk-in Place Mechanic | 5d | 2022-12-26 | 2022-12-30 | 46 | 83d |  |
| 48 |  | Joystick Controls | 5d | 2023-01-02 | 2023-01-06 | 47 | 83d |  |
| 49 | 3.4 | **Menu Functionality** | 11d | 2023-01-09 | 2023-01-23 |  |  |  |
| 50 |  | Start-up Menu | 4d | 2023-01-09 | 2023-01-12 |  | 72d |  |
| 51 |  | Level Selection | 2d | 2023-01-13 | 2023-01-16 | 50 | 72d |  |
| 52 |  | Application Instructions | 2d | 2023-01-17 | 2023-01-18 | 51 | 72d |  |
| 53 |  | Level Results | 3d | 2023-01-19 | 2023-01-23 | 52 | 72d |  |
| 54 | 4 | **Testing** | 14d? | 2023-02-20 | 2023-03-09 |  |  |  |
| 55 |  | Testing Equipment Setup | 2d | 2023-02-20 | 2023-02-21 |  | 45d | start no earlier than 2023-02-20 |
| 56 |  | Testing Session | 1d? | 2023-02-22 | 2023-02-22 | 55 | 45d |  |
| 57 |  | Feedback Session | 2d | 2023-02-23 | 2023-02-24 | 56 | 45d |  |
| 58 | 5 | **Documentation** | 50d | 2023-01-09 | 2023-03-17 |  |  |  |
| 59 |  | Review and update report | 40d | 2023-01-09 | 2023-03-03 |  | 43d | start no earlier than 2023-01-09 |
| 60 |  | Review and updat Gantt Chart | 30d | 2023-01-09 | 2023-02-17 |  | 53d | start no earlier than 2023-01-09 |

## Version 2 (saved 2023-04-13)

Note of the change: Update GanttChart.mpp

Last finish 2023-05-02 → 2023-04-28 (-4d).

Added:

| ID | Task | Duration | Start | Finish | Predecessors | Constraint |
| --- | --- | --- | --- | --- | --- | --- |
| 24 | Testing Features | 2d | 2022-11-05 | 2022-11-07 |  | start no earlier than 2022-11-05 |
| 31 | Testing Features | 2d | 2022-11-28 | 2022-11-29 |  | start no earlier than 2022-11-28 |
| 35 | Walk-to-Point | 8d | 2022-12-13 | 2022-12-22 | 34 |  |
| 36 | Teleport | 3d | 2022-12-23 | 2022-12-27 | 34, 35 |  |
| 38 | Testing Features | 2d | 2023-01-06 | 2023-01-09 | 37 |  |
| 43 | Testing Features | 2d | 2023-01-18 | 2023-01-19 | 42 |  |
| 44 | Phase 1 - Feedback | 1d | 2023-01-23 | 2023-01-23 |  |  |
| 45 | **Phase 2 - Implementation** | 22d | 2023-01-24 | 2023-02-22 |  |  |
| 46 | **Sprint 5 - Material and Mesh Improvements** | 6d | 2023-01-24 | 2023-01-31 |  |  |
| 47 | Custom controller mesh and materials | 1d | 2023-01-24 | 2023-01-24 |  | start no earlier than 2023-01-24 |
| 48 | Improve point selection tool | 2d | 2023-01-25 | 2023-01-26 | 47 |  |
| 49 | Testing Features | 2d | 2023-01-27 | 2023-01-30 | 48 |  |
| 50 | **Sprint 6 - Visual Improvements** | 5d | 2023-01-30 | 2023-02-03 |  |  |
| 51 | Improve endpoint target | 1d | 2023-01-30 | 2023-01-30 |  | start no earlier than 2023-01-30 |
| 52 | Minor bug fixes | 2d | 2023-01-31 | 2023-02-01 | 51 |  |
| 53 | Testing Features | 2d | 2023-02-02 | 2023-02-03 | 52 |  |
| 54 | **Sprint 7 - Multiplayer Functionality** | 13d | 2023-02-06 | 2023-02-22 |  |  |
| 55 | Establish server and client communication | 2d | 2023-02-06 | 2023-02-07 |  | start no earlier than 2023-02-06 |
| 56 | Modify paradigms to be fit for replication | 8d | 2023-02-08 | 2023-02-17 | 55 |  |
| 57 | Testing Features | 2d | 2023-02-20 | 2023-02-21 | 56 |  |
| 58 | Phase 2 - Feedback | 5d | 2023-02-23 | 2023-03-01 |  |  |
| 59 | **Phase 3 - Implementation** | 16d | 2023-03-02 | 2023-03-22 |  |  |
| 60 | **Sprint 8 - Collision Mechanics** | 10d | 2023-03-02 | 2023-03-15 |  |  |
| 61 | Collision Capsule Functions | 5d | 2023-03-02 | 2023-03-08 |  |  |
| 62 | Update all paradigms | 3d | 2023-03-09 | 2023-03-13 | 61 |  |
| 63 | Testing Features | 2d | 2023-03-14 | 2023-03-15 | 62 |  |
| 64 | **Sprint 9 - Additional Modular Variable** | 5d | 2023-03-16 | 2023-03-21 |  |  |
| 65 | Add selection distance | 2d | 2023-03-16 | 2023-03-17 |  |  |
| 66 | Update relevant menus | 1d | 2023-03-18 | 2023-03-18 | 65 |  |
| 67 | Testing Features | 2d | 2023-03-20 | 2023-03-21 | 66 |  |

Removed: 3 Ethics Declaration; 4 Ethics Submission; 16 CW1 Submission; 17 CW2 Submission; 21 Report Submission; 22 Software Submission; 27 Variable Vehicle Speeds; 28 Variable Vehicle Spawn rates; 31 Vehicles follow traffic light system; 32 Vehicle interaction with zebra crossing; 36 Zebra Crossing Level; 37 Pelican Crossing Level; 38 Crossroad Crossing Level; 39 Practice Level; 45 First and Third-Person POVs; 53 Level Results; 55 Testing Equipment Setup; 56 Testing Session; 57 Feedback Session

Changed:

| ID | Task | Start | Finish | Duration | Total float | Predecessors | Other |
| --- | --- | --- | --- | --- | --- | --- | --- |
| 12 | **Other Commitments** | 2022-11-09 → 2022-10-17 (-23d) | 2023-05-02 → 2023-04-28 (-4d) | 132d? → 152d? |  |  |  |
| 13 | Mobile Platform Applications Module Coursework | 2022-11-09 → 2022-10-17 (-23d) | 2023-03-18 → 2023-03-10 (-8d) | 100d → 116d | 32d → 36d |  | constraint none → finish no earlier than 2023-03-10 |
| 14 | Graphics in Games Module Coursework | 2023-01-17 → 2023-01-06 (-11d) | 2023-04-28 → 2023-04-19 (-9d) |  | 2d → 7d |  | constraint finish no earlier than 2023-04-28 → finish no earlier than 2023-04-19 |
| 15 | Serious Games Module Coursework |  | 2023-05-02 → 2023-04-18 (-14d) | 134d → 124d | 0d → 8d |  | constraint finish no earlier than 2023-05-02 → finish no earlier than 2023-04-18 |
| 16 | Virtual Reality Module Coursework |  | 2023-04-17 → 2023-04-28 (+11d) | 143d? → 152d |  |  |  |
| 17 | **Phase 1 - Implementation** |  | 2023-01-23 → 2023-01-20 (-3d) | 88d → 87d |  |  | was named Implementation |
| 18 | **Sprint 1 - Automated Traffic System** |  | 2022-11-10 → 2022-11-11 (+1d) | 30d → 31d | 130d → none |  | was named Automated Traffic System |
| 21 | Vehicles stop in front of each other |  |  |  | 147d → 145d | Variable Vehicle Spawn rates → none |  |
| 25 | **Sprint 2 - Application Levels** | 2022-11-25 → 2022-11-14 (-11d) | 2022-12-19 → 2022-11-30 (-19d) | 22d → 15d |  |  | was named Application Levels |
| 26 | Plain Crossing Level | 2022-11-25 → 2022-11-14 (-11d) | 2022-11-25 → 2022-11-15 (-10d) | 1d → 2d | 116d → 124d |  | constraint none → start no earlier than 2022-11-14 |
| 27 | Level Starting Point | 2022-12-04 → 2022-11-17 (-17d) | 2022-12-04 → 2022-11-17 (-17d) |  | 109d → 122d | Practice Level → none | constraint start no earlier than 2022-12-04 → start no earlier than 2022-11-17 |
| 28 | Level Completion Point | 2022-12-06 → 2022-11-21 (-15d) | 2022-12-06 → 2022-11-21 (-15d) |  | 107d → 120d |  | constraint start no earlier than 2022-12-06 → start no earlier than 2022-11-21 |
| 29 | Road 3D Models | 2022-11-25 → 2022-11-14 (-11d) | 2022-11-30 → 2022-11-21 (-9d) |  | 113d → 116d |  |  |
| 30 | Surrounding Area Decorations | 2022-12-09 → 2022-11-22 (-17d) | 2022-12-13 → 2022-11-25 (-18d) |  | 101d → 116d | none → 29 | constraint start no earlier than 2022-12-09 → none |
| 32 | **Sprint 3 - Locomotion Paradigms** | 2022-12-19 → 2022-12-05 (-14d) | 2023-01-06 → 2023-01-09 (+3d) | 15d → 27d |  |  | was named User and Locomotion |
| 33 | Thumb-stick | 2022-12-22 → 2022-12-05 (-17d) | 2022-12-23 → 2022-12-06 (-17d) |  | 83d → 80d | First and Third-Person POVs → none | was named Generic Player Avatar |
| 34 | Jogging in Place | 2022-12-26 → 2022-12-07 (-19d) | 2022-12-30 → 2022-12-12 (-18d) |  | 83d → 80d |  | was named Walk-in Place Mechanic |
| 37 | Arm Swinging | 2023-01-02 → 2022-12-28 (-5d) | 2023-01-06 → 2023-01-05 (-1d) | 5d → 7d | 83d → 80d | 34 → 36 | was named Joystick Controls |
| 39 | **Sprint 4 - Menu Functionality** |  | 2023-01-23 → 2023-01-19 (-4d) | 11d → 9d |  |  | was named Menu Functionality |
| 40 | Start-up Menu |  | 2023-01-12 → 2023-01-11 (-1d) | 4d → 3d |  |  |  |
| 41 | Level Selection | 2023-01-13 → 2023-01-12 (-1d) | 2023-01-16 → 2023-01-13 (-3d) |  |  |  |  |
| 42 | Application Instructions | 2023-01-17 → 2023-01-16 (-1d) | 2023-01-18 → 2023-01-17 (-1d) |  |  |  |  |
| 68 | Preliminary Testing | 2023-02-20 → 2023-03-23 (+31d) | 2023-03-09 → 2023-03-27 (+18d) | 14d? → 3d |  |  | was named Testing |
| 69 | **Documentation** |  | 2023-03-17 → 2023-04-18 (+32d) | 50d → 73d |  |  |  |
| 71 | Review and update gantt chart | 2023-01-09 → 2023-03-09 (+59d) | 2023-02-17 → 2023-04-18 (+60d) |  | 53d → 8d |  | was named Review and updat Gantt Chart; constraint start no earlier than 2023-01-09 → finish no earlier than 2023-04-18 |

## Version 3 (saved 2023-04-17)

Note of the change: Update GanttChart.mpp

Last finish stays 2023-04-28.

Changed:

| ID | Task | Other |
| --- | --- | --- |
| 29 | Road and House 3D Models | was named Road 3D Models |
